# Rediseño Portal

Schedule from MS Project, 2024-05-18 to 2024-08-22, costs in ₡.
Rediseño del Portal de Datos Abiertos del Poder J
Poder Judicial de Costa Rica

## Calendars

- Poder Judicial: Mon-Fri 07:00-12:00, 13:00-16:00; Sat-Sun off.

## Resources

| Resource | Group |
| --- | --- |
| John Compilador | Director Proyecto |
| Juan Interprete | Programador Frontend |
| Pedro Operatius | Programador Backend |
| Carlos Moreras | Programador de QA y Backend |
| Pablo Homero | Coordinador de Comunicacion |
| Hosting |  |

## Schedule

| ID | WBS | Task | Type | Duration | Start | Finish | Predecessors | Total slack | Free slack | Resources | Work | Cost |
| --- | --- | --- | --- | --- | --- | --- | --- | --- | --- | --- | --- | --- |
| 1 | 1 | Inicio | milestone | 0d | 2024-05-18 | 2024-05-18 |  | 0d |  |  |  |  |
| 2 | 2 | **Diseño de Interfaces** |  | 15d | 2024-05-20 | 2024-06-07 |  | 0d |  |  | 152h | 841,698 |
| 3 | 2.1 | Creación de mockups |  | 2d | 2024-05-20 | 2024-05-21 | 1 | 0d |  | Juan Interprete | 16h | 46,300 |
| 4 | 2.2 | Presentación de mockups |  | 1d | 2024-05-22 | 2024-05-22 | 3 | 0d |  | Juan Interprete; Pablo Homero; John Compilador | 24h | 164,816 |
| 5 | 2.3 | Aprobación de mockups |  | 2d | 2024-05-23 | 2024-05-24 | 4 | 0d |  | Pablo Homero; John Compilador | 32h | 283,332 |
| 6 | 2.4 | **Diseño Frontend del portal** |  | 10d | 2024-05-27 | 2024-06-07 |  | 0d |  |  | 80h | 347,250 |
| 7 | 2.4.1 | Implementar cada mockup a nivel de interfaz |  | 2w | 2024-05-27 | 2024-06-07 | 5 | 0d |  | Juan Interprete | 80h | 347,250 |
| 8 | 3 | **Funcionalidad de Usuarios** |  | 17d | 2024-05-20 | 2024-06-11 |  | 35.25d |  |  | 150h | 521,202 |
| 9 | 3.1 | **Registro** |  | 1.38d | 2024-05-20 | 2024-05-21 |  | 44.88d |  |  | 22h | 79,205 |
| 10 | 3.1.1 | Tabla de Usuario en BD |  | 3h | 2024-05-20 | 2024-05-20 | 1 | 44.88d | 0d | Pedro Operatius; Carlos Moreras | 6h | 21,601 |
| 11 | 3.1.2 | Hashing de Contraseñas |  | 1d | 2024-05-20 | 2024-05-21 | 10 | 44.88d | 0d | Pedro Operatius; Carlos Moreras | 16h | 57,604 |
| 12 | 3.2 | **Personalizar perfil** |  | 2d | 2024-06-10 | 2024-06-11 |  | 35.25d |  |  | 32h | 96,373 |
| 13 | 3.2.1 | Preferencias |  | 1d | 2024-06-10 | 2024-06-10 | 6 | 36.25d |  | Juan Interprete; Pedro Operatius | 16h | 50,073 |
| 14 | 3.2.2 | Visualizacion de contenido |  | 2d | 2024-06-10 | 2024-06-11 | 6 | 35.25d |  | Juan Interprete | 16h | 46,300 |
| 15 | 3.3 | Roles por usuario |  | 3d | 2024-05-20 | 2024-05-23 | 10 | 48.88d |  | Pedro Operatius; Carlos Moreras | 48h | 172,812 |
| 16 | 3.4 | **Inicio de sesión** |  | 1d | 2024-05-21 | 2024-05-22 |  | 44.88d |  |  | 16h | 57,604 |
| 17 | 3.4.1 | Encriptacion |  | 1d | 2024-05-21 | 2024-05-22 | 10, 11 | 44.88d | 12.62d | Pedro Operatius; Carlos Moreras | 16h | 57,604 |
| 18 | 3.5 | Sistema de notificaciones |  | 2d | 2024-06-10 | 2024-06-11 | 6 | 35.25d |  | Pedro Operatius; Carlos Moreras | 32h | 115,208 |
| 19 | 4 | **Herramientas de Usabilidad** |  | 20d | 2024-05-20 | 2024-06-14 |  | 8d |  |  | 336h | 1,607,138 |
| 20 | 4.1 | Definicion de tipos de archivos descargables |  | 2d | 2024-05-20 | 2024-05-21 | 1 | 8d | 0d | John Compilador; Pablo Homero; Pedro Operatius | 48h | 337,178 |
| 21 | 4.2 | Sistema de descarga directa y API |  | 1w | 2024-05-22 | 2024-05-28 | 20 | 8d |  | Pedro Operatius; Carlos Moreras | 80h | 403,228 |
| 22 | 4.3 | **Sistema de Busqueda** |  | 1d | 2024-06-10 | 2024-06-10 |  | 34.25d | 0d |  | 32h | 151,996 |
| 23 | 4.3.1 | Filtrado |  | 1d | 2024-06-10 | 2024-06-10 | 7, 21 | 34.25d |  | Juan Interprete; Pedro Operatius | 16h | 50,073 |
| 24 | 4.3.2 | Ordenamiento |  | 1d | 2024-06-10 | 2024-06-10 | 7, 21 | 34.25d |  | John Compilador; Pedro Operatius | 16h | 101,923 |

| ID | WBS | Task | Duration | Start | Finish | Predecessors | Total slack | Free slack | Resources | Work | Cost |
| --- | --- | --- | --- | --- | --- | --- | --- | --- | --- | --- | --- |
| 25 | 4.4 | **Sistema de Analisis** | 5d | 2024-06-10 | 2024-06-14 |  | 32.25d |  |  | 176h | 714,736 |
| 26 | 4.4.1 | Visitas por hora | 2d | 2024-06-10 | 2024-06-11 | 7, 21 | 35.25d |  | Juan Interprete | 16h | 46,300 |
| 27 | 4.4.2 | Metrica de descargas | 2d | 2024-06-10 | 2024-06-11 | 7, 21 | 35.25d |  | Carlos Moreras; Pedro Operatius | 32h | 115,208 |
| 28 | 4.4.3 | Sistema de registros | 5d | 2024-06-10 | 2024-06-14 | 7, 17 | 32.25d |  | Carlos Moreras; Pedro Operatius | 80h | 288,020 |
| 29 | 4.4.4 | Pestañas mas visualizadas | 2d | 2024-06-11 | 2024-06-12 | 7, 22 | 34.25d |  | Carlos Moreras; John Compilador; Pedro Operatius | 48h | 265,208 |
| 30 | 5 | **Formularios** | 15.25d | 2024-06-10 | 2024-07-01 |  | 0d |  |  | 178h | 824,751 |
| 31 | 5.1 | Diseño del mockup para enviar comentarios | 1d | 2024-06-10 | 2024-06-10 | 7, 21 | 0d |  | Juan Interprete | 8h | 23,150 |
| 32 | 5.2 | Aprobacion del Mockup | 3d | 2024-06-11 | 2024-06-13 | 31 | 0d |  | John Compilador; Juan Interprete; Pablo Homero | 72h | 494,448 |
| 33 | 5.3 | **Sistema de envio de comentarios** | 4.25d | 2024-06-14 | 2024-06-20 |  | 0d |  |  | 34h | 114,422 |
| 34 | 5.3.1 | Tabla en la BD para comentarios | 2h | 2024-06-14 | 2024-06-14 | 32 | 0d |  | Pedro Operatius | 2h | 6,730 |
| 35 | 5.3.2 | Backend de comentarios | 4d | 2024-06-14 | 2024-06-20 | 34 | 0d |  | Pedro Operatius | 32h | 107,692 |
| 36 | 5.4 | Diseño a nivel de frontend | 6d | 2024-06-20 | 2024-06-28 | 35 | 0d |  | Juan Interprete | 48h | 138,900 |
| 37 | 5.5 | Unir frontend y backend | 1d | 2024-06-28 | 2024-07-01 | 35, 36 | 0d |  | Carlos Moreras; Juan Interprete | 16h | 53,831 |
| 38 | 6 | **Estructura Web** | 18d | 2024-07-01 | 2024-07-25 |  | 0d |  |  | 392h | 1,536,824 |
| 39 | 6.1 | **Servidores disponibles 24 horas del día** | 5d | 2024-07-01 | 2024-07-08 |  | 0d |  |  | 80h | 509,615 |
| 40 | 6.1.1 | Busqueda de alojamiento con servidores web | 5d | 2024-07-01 | 2024-07-08 | 37 | 0d |  | John Compilador; Pedro Operatius | 80h | 509,615 |
| 41 | 6.2 | Alojamiento en CKAM | 3d | 2024-07-08 | 2024-07-11 | 40 | 0d |  | Pedro Operatius | 24h | 80,769 |
| 42 | 6.3 | **Integración en navegadores web** | 6d | 2024-07-11 | 2024-07-19 |  | 5d |  |  | 48h | 138,900 |
| 43 | 6.3.1 | Chromium | 2d | 2024-07-11 | 2024-07-15 | 41 | 5d | 0d | Juan Interprete | 16h | 46,300 |
| 44 | 6.3.2 | Firefox | 2d | 2024-07-15 | 2024-07-17 | 43 | 5d | 0d | Juan Interprete | 16h | 46,300 |
| 45 | 6.3.3 | Safari | 2d | 2024-07-17 | 2024-07-19 | 44 | 5d | 0d | Juan Interprete | 16h | 46,300 |
| 46 | 6.4 | **Acceso movil** | 10d | 2024-07-11 | 2024-07-25 |  | 0d |  |  | 240h | 807,540 |
| 47 | 6.4.1 | Diseño movil por medio de API | 10d | 2024-07-11 | 2024-07-25 | 41 | 0d |  | Carlos Moreras; Juan Interprete; Pedro Operatius | 240h | 807,540 |
| 48 | 7 | **Metadatos y accesibilidad** | 52.25d | 2024-05-20 | 2024-07-31 |  | 0d |  |  | 296h | 1,626,636 |
| 49 | 7.1 | Definir metadatos necesarios | 1d | 2024-07-19 | 2024-07-22 | 43, 44, 45 | 5d | 0d | John Compilador; Juan Interprete; Pablo Homero | 24h | 164,816 |

| ID | WBS | Task | Type | Duration | Start | Finish | Predecessors | Total slack | Free slack | Resources | Work | Cost |
| --- | --- | --- | --- | --- | --- | --- | --- | --- | --- | --- | --- | --- |
| 50 | 7.2 | **Sistema de aprobación de archivos** |  | 2d | 2024-07-22 | 2024-07-24 |  | 5d |  |  | 48h | 240,994 |
| 51 | 7.2.1 | Aprobación con base en contenido |  | 2d | 2024-07-22 | 2024-07-24 | 49 | 5d |  | Carlos Moreras; Juan Interprete; Pablo Homero | 48h | 240,994 |
| 52 | 7.3 | **Sistema de identificación de metadatos** |  | 1d | 2024-07-22 | 2024-07-23 |  | 6d |  |  | 8h | 23,150 |
| 53 | 7.3.1 | Extracción de metadatos |  | 1d | 2024-07-22 | 2024-07-23 | 49 | 6d |  | Juan Interprete | 8h | 23,150 |
| 54 | 7.4 | **Capacitar al equipo en WCAG** |  | 3d | 2024-05-20 | 2024-05-22 |  | 45.25d |  |  | 120h | 667,260 |
| 55 | 7.4.1 | Lectura de las guías |  | 2d | 2024-05-20 | 2024-05-21 | 3SS | 45.25d | 0d | John Compilador; Juan Interprete; Pedro Operatius; Carlos Moreras; Pablo Homero | 80h | 444,840 |
| 56 | 7.4.2 | Comprobación |  | 1d | 2024-05-22 | 2024-05-22 | 55 | 45.25d |  | John Compilador; Juan Interprete; Pedro Operatius; Carlos Moreras; Pablo Homero | 40h | 222,420 |
| 57 | 7.5 | Implementar a nivel de frontend y backend mecanismo de accesbilidad |  | 4d | 2024-07-25 | 2024-07-31 | 47, 56 | 0d |  | Carlos Moreras; Juan Interprete; Pedro Operatius | 96h | 530,416 |
| 58 | 8 | **Integración de partes** |  | 16d | 2024-07-31 | 2024-08-22 |  | 0d |  |  | 448h | 2,277,560 |
| 59 | 8.1 | Unión de las subpartes |  | 2w | 2024-07-31 | 2024-08-14 | 2, 8, 19, 30, 38, 48 | 0d |  | Carlos Moreras; Juan Interprete; Pedro Operatius | 240h | 1,211,310 |
| 60 | 8.2 | **Pruebas de unitarias** |  | 2d | 2024-08-14 | 2024-08-16 |  | 0d |  |  | 48h | 176,570 |
| 61 | 8.2.1 | Pruebas unitarias del backend |  | 2d | 2024-08-14 | 2024-08-16 | 59 | 0d |  | Carlos Moreras; Pedro Operatius | 32h | 115,208 |
| 62 | 8.2.2 | Pruebas en la Base de datos |  | 2d | 2024-08-14 | 2024-08-16 | 59 | 0d |  | Carlos Moreras | 16h | 61,362 |
| 63 | 8.3 | Lanzamiento |  | 4d | 2024-08-16 | 2024-08-22 | 61, 62, 2, 8, 19, 30, 38 | 0d |  | Carlos Moreras; John Compilador; Juan Interprete; Pablo Homero; Pedro Operatius | 160h | 889,680 |
| 64 | 9 | Fin | milestone | 0d | 2024-08-22 | 2024-08-22 | 63 | 0d |  |  |  |  |
